# Cronograma

Schedule from MS Project, 2020-01-20 to 2020-02-24.

## Calendars

- Estándar: Mon-Fri 09:00-13:00, 15:00-19:00; Sat-Sun off.

## Resources

| Resource |
| --- |
| Cervantes Moreno Christian Andres |
| Flores Altamirano Edgar |
| López Rivera Aiko |
| López Sánchez Gustavo Andrés |

## Schedule

| ID | WBS | Task | Duration | Start | Finish | Predecessors | Total slack | Free slack | Constraint | Resources | Work |
| --- | --- | --- | --- | --- | --- | --- | --- | --- | --- | --- | --- |
| 1 | 1 | **Proyecto** | 26d | 2020-01-20 | 2020-02-24 |  | 0d |  |  |  | 320h |
| 2 | 1.1 | **Capacitación en Angular** | 10d | 2020-01-20 | 2020-01-31 |  | 0d |  |  |  | 160h |
| 3 | 1.1.1 | Sintaxis de typescript | 1d | 2020-01-20 | 2020-01-20 |  | 0d |  |  | López Sánchez Gustavo Andrés; Flores Altamirano Edgar | 16h |
| 4 | 1.1.2 | Tipos de dato, funciones | 1d | 2020-01-21 | 2020-01-21 | 3 | 0d |  |  | López Sánchez Gustavo Andrés; Flores Altamirano Edgar | 16h |
| 5 | 1.1.3 | Uso de herencia e implementación | 1d | 2020-01-22 | 2020-01-22 | 4 | 0d |  |  | López Sánchez Gustavo Andrés; Flores Altamirano Edgar | 16h |
| 6 | 1.1.4 | USo de CLI Angular (Comandos para creación dinámica) | 1d | 2020-01-23 | 2020-01-23 | 5 | 0d |  | start no earlier than 2020-01-23 | López Sánchez Gustavo Andrés; Flores Altamirano Edgar | 16h |
| 7 | 1.1.5 | Creación y uso de componentes | 1d | 2020-01-24 | 2020-01-24 | 6 | 0d |  | start no earlier than 2020-01-24 | López Sánchez Gustavo Andrés; Flores Altamirano Edgar | 16h |
| 8 | 1.1.6 | Ciclo de vida de los componentes | 1d | 2020-01-27 | 2020-01-27 | 7 | 0d |  |  | López Sánchez Gustavo Andrés; Flores Altamirano Edgar | 16h |
| 9 | 1.1.7 | Comunicación entre componentes | 1d | 2020-01-28 | 2020-01-28 | 8 | 0d |  |  | López Sánchez Gustavo Andrés; Flores Altamirano Edgar | 16h |
| 10 | 1.1.8 | Servicios Http y Ajax en Angular | 1d | 2020-01-29 | 2020-01-29 | 9 | 0d |  |  | López Sánchez Gustavo Andrés; Flores Altamirano Edgar | 16h |
| 11 | 1.1.9 | Pipes y formularios | 1d | 2020-01-30 | 2020-01-30 | 10 | 0d |  |  | López Sánchez Gustavo Andrés; Flores Altamirano Edgar | 16h |
| 12 | 1.1.10 | Angular Material UI | 1d | 2020-01-31 | 2020-01-31 | 11 | 0d |  |  | López Sánchez Gustavo Andrés; Flores Altamirano Edgar | 16h |
| 13 | 1.1.11 | Aplicación de prueba Angular 8.0 | 1d | 2020-01-31 | 2020-01-31 | 11 | 0d |  |  |  |  |
| 14 | 1.2 | **Capacitación en Latex** | 10d | 2020-01-20 | 2020-01-31 |  | 16d |  |  |  | 160h |
| 15 | 1.2.1 | Sintaxis | 1d | 2020-01-20 | 2020-01-20 |  | 2d | 0d |  | López Rivera Aiko; Cervantes Moreno Christian Andres | 16h |
| 16 | 1.2.2 | Estructura | 1d | 2020-01-21 | 2020-01-21 | 15 | 2d | 0d |  | López Rivera Aiko; Cervantes Moreno Christian Andres | 16h |
| 17 | 1.2.3 | Prueba de librerías | 1d | 2020-01-22 | 2020-01-22 | 16 | 2d | 0d |  | López Rivera Aiko; Cervantes Moreno Christian Andres | 16h |
| 18 | 1.2.4 | Uso de Overleaf | 1d | 2020-01-23 | 2020-01-23 | 17 | 2d | 0d |  | López Rivera Aiko; Cervantes Moreno Christian Andres | 16h |
| 19 | 1.2.5 | Plantilla latex (Reporte Técnico) | 4d | 2020-01-24 | 2020-01-29 | 18 | 2d | 0d |  | López Rivera Aiko; Cervantes Moreno Christian Andres | 64h |
| 20 | 1.2.6 | Requerimientos No Funcionales | 1d | 2020-01-30 | 2020-01-30 | 19 | 2d | 0d |  | López Rivera Aiko; Cervantes Moreno Christian Andres | 16h |
| 21 | 1.2.7 | Análisis de Riesgos**************** | 1d | 2020-01-31 | 2020-01-31 | 20 | 2d |  |  | López Rivera Aiko; Cervantes Moreno Christian Andres | 16h |
| 22 | 1.3 | **Arquitectura y Metodología** | 2d | 2020-02-03 | 2020-02-04 | 2 | 0d |  |  |  |  |
| 23 | 1.3.1 | Descripción de arquitecturra y metodologia | 2d | 2020-02-03 | 2020-02-04 |  | 0d |  |  |  |  |
| 24 | 1.3.2 | Creacion de Diagrama de narquitectura | 2d | 2020-02-03 | 2020-02-04 |  | 0d |  |  |  |  |

| ID | WBS | Task | Duration | Start | Finish | Predecessors | Total slack |
| --- | --- | --- | --- | --- | --- | --- | --- |
| 25 | 1.4 | **Modelo de Negocio** | 3d | 2020-02-05 | 2020-02-07 | 22 | 0d |
| 26 | 1.4.1 | Identificación de Objetos de Negocio | 1d | 2020-02-05 | 2020-02-05 |  | 2d |
| 27 | 1.4.2 | Creación de primera versión de Modelo de Negocio | 3d | 2020-02-05 | 2020-02-07 |  | 0d |
| 28 | 1.5 | **Capacitación en Firebase** | 9d | 2020-02-10 | 2020-02-20 | 25 | 0d |
| 29 | 1.5.1 | Base de Datos no SQL | 1d | 2020-02-10 | 2020-02-10 |  | 0d |
| 30 | 1.5.2 | Colecciones y Documentos | 1d | 2020-02-10 | 2020-02-10 |  | 0d |
| 31 | 1.5.3 | Estructura JSON | 2d | 2020-02-11 | 2020-02-12 | 29, 30 | 0d |
| 32 | 1.5.4 | Cloud Firestore | 3d | 2020-02-13 | 2020-02-17 | 31 | 0d |
| 33 | 1.5.5 | Realtime Database | 1d | 2020-02-18 | 2020-02-18 | 32 | 0d |
| 34 | 1.5.6 | Reglas de seguridad | 2d | 2020-02-19 | 2020-02-20 | 33 | 0d |
| 35 | 1.5.7 | Tipos de autentificación | 2d | 2020-02-19 | 2020-02-20 | 33 | 0d |
| 36 | 1.6 | **Integración Firebase y Angular** | 1d | 2020-02-21 | 2020-02-21 | 28 | 0d |
| 37 | 1.6.1 | Prueba con CRUD Angular + Firebase | 1d | 2020-02-21 | 2020-02-21 |  | 0d |
| 38 | 1.6.2 | Prueba de Alta documento con diferentes tipos de datos | 1d | 2020-02-21 | 2020-02-21 |  | 0d |
| 39 | 1.6.3 | Lectura de datos individual | 1d | 2020-02-21 | 2020-02-21 |  | 0d |
| 40 | 1.6.4 | Lectura de datos por Colecciones | 1d | 2020-02-21 | 2020-02-21 |  | 0d |
| 41 | 1.6.5 | Lectura con filtros | 1d | 2020-02-21 | 2020-02-21 |  | 0d |
| 42 | 1.6.6 | Funciones Cloud | 1d | 2020-02-21 | 2020-02-21 |  | 0d |
| 43 | 1.6.7 | Altas con por lotes | 1d | 2020-02-21 | 2020-02-21 |  | 0d |
| 44 | 1.6.8 | Edición de documentos | 1d | 2020-02-21 | 2020-02-21 |  | 0d |
| 45 | 1.7 | **<Tarea nueva>** | 1d | 2020-02-24 | 2020-02-24 | 25, 28, 36 | 0d |
| 46 | 1.7.1 | Hosting Firebase | 1d | 2020-02-24 | 2020-02-24 |  | 0d |
| 47 | 1.7.2 | Pruebas de sitio | 1d | 2020-02-24 | 2020-02-24 |  | 0d |
